# ShawTrust_SD_Master_Plan_v0.2

Schedule from MS Project, 2011-07-21 to 2011-09-07.
Sony Electronics, Inc.

## Calendars

- Standard: Mon-Fri 08:00-12:00, 13:00-17:00; Sat-Sun off.

## Resources

| Resource |
| --- |
| Dev1 |
| Test1 |
| Dev2 |
| Dev3 |
| Dev4 |
| PM |
| DevTeam |
| Devx |
| Dev14 |
| Dev5 |
| Dev Team |

## Schedule

| ID | WBS | Task | Duration | Start | Finish | Predecessors | Total slack | Free slack | Constraint | Resources | Work |
| --- | --- | --- | --- | --- | --- | --- | --- | --- | --- | --- | --- |
| 1 | 1 | **AB-SD** | 35d | 2011-07-21 08:00 | 2011-09-07 17:00 |  | 0d |  |  |  | 2414h |
| 2 | 1.1 | **Initiation** | 1d | 2011-07-21 08:00 | 2011-07-21 17:00 |  | 0d |  |  |  | 16h |
| 3 | 1.1.1 | Project kick-off & introduction | 0.25d | 2011-07-21 08:00 | 2011-07-21 10:00 |  | 0d |  | start no earlier than 2011-07-21 08:00 | PM; DevTeam | 4h |
| 4 | 1.1.2 | Preparation & Study overview requirements | 0.5d | 2011-07-21 10:00 | 2011-07-21 15:00 | 3 | 0d |  |  | PM; DevTeam | 8h |
| 5 | 1.1.3 | Requirement brainstorming | 0.25d | 2011-07-21 15:00 | 2011-07-21 17:00 | 4 | 0d |  |  | PM; DevTeam | 4h |
| 6 | 1.2 | **Definition & Solution** | 1d | 2011-07-22 08:00 | 2011-07-22 17:00 |  | 0d |  |  |  | 14h |
| 7 | 1.2.1 | Study overview designs | 0.5d | 2011-07-22 08:00 | 2011-07-22 12:00 | 5 | 0d |  |  | DevTeam; Test1 | 8h |
| 8 | 1.2.2 | Build up pseudo code scheletons | 0.25d | 2011-07-22 13:00 | 2011-07-22 15:00 | 7 | 0d |  |  | DevTeam | 2h |
| 9 | 1.2.3 | Brainstorming: design & conventions | 0.25d | 2011-07-22 15:00 | 2011-07-22 17:00 | 8 | 0d |  |  | PM; DevTeam | 4h |
| 10 | 1.3 | **Construction** | 32d | 2011-07-25 08:00 | 2011-09-06 17:00 |  | 0d |  |  |  | 2384h |
| 11 | 1.3.1 | **Iteration 1 - Common, Programme, Geography1** | 8d | 2011-07-25 08:00 | 2011-08-03 17:00 |  | 0d |  |  |  | 596h |
| 12 | 1.3.1.1 | **Logon-Logout (DiepNQ)** | 7d | 2011-07-25 08:00 | 2011-08-02 17:00 |  | 0d |  |  | Dev1 | 116h |
| 13 | 1.3.1.1.1 | Study requirement | 0.5d | 2011-07-25 08:00 | 2011-07-25 12:00 | 9 | 0d |  |  | Dev1 | 4h |
| 14 | 1.3.1.1.2 | Prepare GUI prototypes | 0.5d | 2011-07-25 13:00 | 2011-07-25 17:00 | 13 | 1d | 0d |  | Dev1 | 4h |
| 15 | 1.3.1.1.3 | Study design & prepare pseudo codes | 0.75d | 2011-07-26 08:00 | 2011-07-26 15:00 | 14 | 1d | 0d |  | Dev1 | 6h |
| 16 | 1.3.1.1.4 | Prepare UT case document | 0.25d | 2011-07-26 15:00 | 2011-07-26 17:00 | 15 | 1d | 0d |  | Dev1 | 2h |
| 17 | 1.3.1.1.5 | Code | 2d | 2011-07-27 08:00 | 2011-07-28 17:00 | 13, 16 | 1d | 0d |  | Dev1 | 16h |
| 18 | 1.3.1.1.6 | Self code review & Fix bugs | 0.5d | 2011-07-29 08:00 | 2011-07-29 12:00 | 17 | 1d | 0d |  | Dev1 | 4h |
| 19 | 1.3.1.1.7 | Peer code review & Fix bugs | 0.5d | 2011-07-29 13:00 | 2011-07-29 17:00 | 18 | 1d | 0d |  | Dev1; Devx | 8h |
| 20 | 1.3.1.1.8 | Update UT case document | 0.5d | 2011-08-01 08:00 | 2011-08-01 12:00 | 19 | 1d | 0d |  | Dev1 | 4h |
| 21 | 1.3.1.1.9 | Prepare UT scripts | 0.5d | 2011-08-01 13:00 | 2011-08-01 17:00 | 20 | 1d | 0d |  | Dev1 | 4h |
| 22 | 1.3.1.1.10 | Perform UT & Fix bugs | 1d | 2011-08-02 08:00 | 2011-08-02 17:00 | 21 | 1d |  |  | Dev1 | 8h |
| 23 | 1.3.1.2 | **Lookups (DungPV2)** | 7d | 2011-07-25 08:00 | 2011-08-02 17:00 |  | 0d |  |  | Dev2 | 116h |
| 24 | 1.3.1.2.1 | Study requirement | 0.5d | 2011-07-25 08:00 | 2011-07-25 12:00 | 13SS | 0d |  |  | Dev2 | 4h |
| 25 | 1.3.1.2.2 | Prepare GUI prototypes | 0.5d | 2011-07-25 13:00 | 2011-07-25 17:00 | 24 | 0d |  |  | Dev2 | 4h |
| 26 | 1.3.1.2.3 | Study design & prepare pseudo codes | 0.75d | 2011-07-26 08:00 | 2011-07-26 15:00 | 25 | 0d |  |  | Dev2 | 6h |
| 27 | 1.3.1.2.4 | Prepare UT case document | 0.25d | 2011-07-26 15:00 | 2011-07-26 17:00 | 26 | 0d |  |  | Dev2 | 2h |
| 28 | 1.3.1.2.5 | Code | 2d | 2011-07-27 08:00 | 2011-07-28 17:00 | 24, 27 | 0d |  |  | Dev2 | 16h |
| 29 | 1.3.1.2.6 | Self code review & Fix bugs | 0.5d | 2011-07-29 08:00 | 2011-07-29 12:00 | 28 | 0d |  |  | Dev2 | 4h |
| 30 | 1.3.1.2.7 | Peer code review & Fix bugs | 0.5d | 2011-07-29 13:00 | 2011-07-29 17:00 | 29 | 0d |  |  | Dev2; Devx | 8h |
| 31 | 1.3.1.2.8 | Update UT case document | 0.5d | 2011-08-01 08:00 | 2011-08-01 12:00 | 30 | 0d |  |  | Dev2 | 4h |
| 32 | 1.3.1.2.9 | Prepare UT scripts | 0.5d | 2011-08-01 13:00 | 2011-08-01 17:00 | 31 | 0d |  |  | Dev2 | 4h |
| 33 | 1.3.1.2.10 | Perform UT & Fix bugs | 1d | 2011-08-02 08:00 | 2011-08-02 17:00 | 32 | 0d |  |  | Dev2 | 8h |

Notes:
- 23: Address, TypeOfBusiness

| ID | WBS | Task | Duration | Start | Finish | Predecessors | Total slack | Resources | Work |
| --- | --- | --- | --- | --- | --- | --- | --- | --- | --- |
| 34 | 1.3.1.3 | **Contacts Maintenance (HungCV)** | 7d | 2011-07-25 08:00 | 2011-08-02 17:00 |  | 0d | Dev3 | 116h |
| 35 | 1.3.1.3.1 | Study requirement | 0.5d | 2011-07-25 08:00 | 2011-07-25 12:00 | 13SS | 0d | Dev3 | 4h |
| 36 | 1.3.1.3.2 | Prepare GUI prototypes | 0.5d | 2011-07-25 13:00 | 2011-07-25 17:00 | 35 | 0d | Dev3 | 4h |
| 37 | 1.3.1.3.3 | Study design & prepare pseudo codes | 0.75d | 2011-07-26 08:00 | 2011-07-26 15:00 | 36 | 0d | Dev3 | 6h |
| 38 | 1.3.1.3.4 | Prepare UT case document | 0.25d | 2011-07-26 15:00 | 2011-07-26 17:00 | 37 | 0d | Dev3 | 2h |
| 39 | 1.3.1.3.5 | Code | 2d | 2011-07-27 08:00 | 2011-07-28 17:00 | 35, 38 | 0d | Dev3 | 16h |
| 40 | 1.3.1.3.6 | Self code review & Fix bugs | 0.5d | 2011-07-29 08:00 | 2011-07-29 12:00 | 39 | 0d | Dev3 | 4h |
| 41 | 1.3.1.3.7 | Peer code review & Fix bugs | 0.5d | 2011-07-29 13:00 | 2011-07-29 17:00 | 40 | 0d | Dev3; Devx | 8h |
| 42 | 1.3.1.3.8 | Update UT case document | 0.5d | 2011-08-01 08:00 | 2011-08-01 12:00 | 41 | 0d | Dev3 | 4h |
| 43 | 1.3.1.3.9 | Prepare UT scripts | 0.5d | 2011-08-01 13:00 | 2011-08-01 17:00 | 42 | 0d | Dev3 | 4h |
| 44 | 1.3.1.3.10 | Perform UT & Fix bugs | 1d | 2011-08-02 08:00 | 2011-08-02 17:00 | 43 | 0d | Dev3 | 8h |
| 45 | 1.3.1.4 | **Government Office Region Maintain (TaiND)** | 7d | 2011-07-25 08:00 | 2011-08-02 17:00 |  | 0d | Dev4 | 116h |
| 46 | 1.3.1.4.1 | Study requirement | 0.5d | 2011-07-25 08:00 | 2011-07-25 12:00 | 13SS | 0d | Dev4 | 4h |
| 47 | 1.3.1.4.2 | Prepare GUI prototypes | 0.5d | 2011-07-25 13:00 | 2011-07-25 17:00 | 46 | 0d | Dev4 | 4h |
| 48 | 1.3.1.4.3 | Study design & prepare pseudo codes | 0.75d | 2011-07-26 08:00 | 2011-07-26 15:00 | 47 | 0d | Dev4 | 6h |
| 49 | 1.3.1.4.4 | Prepare UT case document | 0.25d | 2011-07-26 15:00 | 2011-07-26 17:00 | 48 | 0d | Dev4 | 2h |
| 50 | 1.3.1.4.5 | Code | 2d | 2011-07-27 08:00 | 2011-07-28 17:00 | 46, 49 | 0d | Dev4 | 16h |
| 51 | 1.3.1.4.6 | Self code review & Fix bugs | 0.5d | 2011-07-29 08:00 | 2011-07-29 12:00 | 50 | 0d | Dev4 | 4h |
| 52 | 1.3.1.4.7 | Peer code review & Fix bugs | 0.5d | 2011-07-29 13:00 | 2011-07-29 17:00 | 51 | 0d | Dev4; Devx | 8h |
| 53 | 1.3.1.4.8 | Update UT case document | 0.5d | 2011-08-01 08:00 | 2011-08-01 12:00 | 52 | 0d | Dev4 | 4h |
| 54 | 1.3.1.4.9 | Prepare UT scripts | 0.5d | 2011-08-01 13:00 | 2011-08-01 17:00 | 53 | 0d | Dev4 | 4h |
| 55 | 1.3.1.4.10 | Perform UT & Fix bugs | 1d | 2011-08-02 08:00 | 2011-08-02 17:00 | 54 | 0d | Dev4 | 8h |
| 56 | 1.3.1.5 | **Programme Maintenance (QuyetNV,DangDT1)** | 7d | 2011-07-25 08:00 | 2011-08-02 17:00 |  | 0d | Dev5 | 116h |
| 57 | 1.3.1.5.1 | Study requirement | 0.5d | 2011-07-25 08:00 | 2011-07-25 12:00 | 13SS | 0d | Dev5 | 4h |
| 58 | 1.3.1.5.2 | Prepare GUI prototypes | 0.5d | 2011-07-25 13:00 | 2011-07-25 17:00 | 57 | 0d | Dev5 | 4h |
| 59 | 1.3.1.5.3 | Study design & prepare pseudo codes | 0.75d | 2011-07-26 08:00 | 2011-07-26 15:00 | 58 | 0d | Dev5 | 6h |
| 60 | 1.3.1.5.4 | Prepare UT case document | 0.25d | 2011-07-26 15:00 | 2011-07-26 17:00 | 59 | 0d | Dev5 | 2h |
| 61 | 1.3.1.5.5 | Code | 2d | 2011-07-27 08:00 | 2011-07-28 17:00 | 57, 60 | 0d | Dev5 | 16h |
| 62 | 1.3.1.5.6 | Self code review & Fix bugs | 0.5d | 2011-07-29 08:00 | 2011-07-29 12:00 | 61 | 0d | Dev5 | 4h |
| 63 | 1.3.1.5.7 | Peer code review & Fix bugs | 0.5d | 2011-07-29 13:00 | 2011-07-29 17:00 | 62 | 0d | Dev5; Devx | 8h |
| 64 | 1.3.1.5.8 | Update UT case document | 0.5d | 2011-08-01 08:00 | 2011-08-01 12:00 | 63 | 0d | Dev5 | 4h |
| 65 | 1.3.1.5.9 | Prepare UT scripts | 0.5d | 2011-08-01 13:00 | 2011-08-01 17:00 | 64 | 0d | Dev5 | 4h |
| 66 | 1.3.1.5.10 | Perform UT & Fix bugs | 1d | 2011-08-02 08:00 | 2011-08-02 17:00 | 65 | 0d | Dev5 | 8h |
| 67 | 1.3.1.6 | Milestone Day 1 | 1d | 2011-08-03 08:00 | 2011-08-03 17:00 | 56, 23, 34, 45 | 0d | PM; DevTeam | 16h |

Notes:
- 34: (List, Add, Amend)
- 45: List, Add, Amend, Mark In-active
- 56: List, Add, Amend, Mark In-active

| ID | WBS | Task | Duration | Start | Finish | Predecessors | Total slack | Resources | Work |
| --- | --- | --- | --- | --- | --- | --- | --- | --- | --- |
| 68 | 1.3.2 | **Iteration 2 - Organization Maintenance** | 8d | 2011-08-04 08:00 | 2011-08-15 17:00 |  | 0d |  | 596h |
| 69 | 1.3.2.1 | **Organizations Maintenance Part1** | 7d | 2011-08-04 08:00 | 2011-08-12 17:00 |  | 0d | Dev1 | 116h |
| 70 | 1.3.2.1.1 | Study requirement | 0.5d | 2011-08-04 08:00 | 2011-08-04 12:00 | 11 | 0d | Dev1 | 4h |
| 71 | 1.3.2.1.2 | Prepare GUI prototypes | 0.5d | 2011-08-04 13:00 | 2011-08-04 17:00 | 70 | 0d | Dev1 | 4h |
| 72 | 1.3.2.1.3 | Study design & prepare pseudo codes | 0.75d | 2011-08-05 08:00 | 2011-08-05 15:00 | 71 | 0d | Dev1 | 6h |
| 73 | 1.3.2.1.4 | Prepare UT case document | 0.25d | 2011-08-05 15:00 | 2011-08-05 17:00 | 72 | 0d | Dev1 | 2h |
| 74 | 1.3.2.1.5 | Code | 2d | 2011-08-08 08:00 | 2011-08-09 17:00 | 70, 73 | 0d | Dev1 | 16h |
| 75 | 1.3.2.1.6 | Self code review & Fix bugs | 0.5d | 2011-08-10 08:00 | 2011-08-10 12:00 | 74 | 0d | Dev1 | 4h |
| 76 | 1.3.2.1.7 | Peer code review & Fix bugs | 0.5d | 2011-08-10 13:00 | 2011-08-10 17:00 | 75 | 0d | Dev1; Devx | 8h |
| 77 | 1.3.2.1.8 | Update UT case document | 0.5d | 2011-08-11 08:00 | 2011-08-11 12:00 | 76 | 0d | Dev1 | 4h |
| 78 | 1.3.2.1.9 | Prepare UT scripts | 0.5d | 2011-08-11 13:00 | 2011-08-11 17:00 | 77 | 0d | Dev1 | 4h |
| 79 | 1.3.2.1.10 | Perform UT & Fix bugs | 1d | 2011-08-12 08:00 | 2011-08-12 17:00 | 78 | 0d | Dev1 | 8h |
| 80 | 1.3.2.2 | **Organizations Maintenance Part2** | 7d | 2011-08-04 08:00 | 2011-08-12 17:00 |  | 0d | Dev2 | 116h |
| 81 | 1.3.2.2.1 | Study requirement | 0.5d | 2011-08-04 08:00 | 2011-08-04 12:00 | 70SS | 0d | Dev2 | 4h |
| 82 | 1.3.2.2.2 | Prepare GUI prototypes | 0.5d | 2011-08-04 13:00 | 2011-08-04 17:00 | 81 | 0d | Dev2 | 4h |
| 83 | 1.3.2.2.3 | Study design & prepare pseudo codes | 0.75d | 2011-08-05 08:00 | 2011-08-05 15:00 | 82 | 0d | Dev2 | 6h |
| 84 | 1.3.2.2.4 | Prepare UT case document | 0.25d | 2011-08-05 15:00 | 2011-08-05 17:00 | 83 | 0d | Dev2 | 2h |
| 85 | 1.3.2.2.5 | Code | 2d | 2011-08-08 08:00 | 2011-08-09 17:00 | 81, 84 | 0d | Dev2 | 16h |
| 86 | 1.3.2.2.6 | Self code review & Fix bugs | 0.5d | 2011-08-10 08:00 | 2011-08-10 12:00 | 85 | 0d | Dev2 | 4h |
| 87 | 1.3.2.2.7 | Peer code review & Fix bugs | 0.5d | 2011-08-10 13:00 | 2011-08-10 17:00 | 86 | 0d | Dev2; Devx | 8h |
| 88 | 1.3.2.2.8 | Update UT case document | 0.5d | 2011-08-11 08:00 | 2011-08-11 12:00 | 87 | 0d | Dev2 | 4h |
| 89 | 1.3.2.2.9 | Prepare UT scripts | 0.5d | 2011-08-11 13:00 | 2011-08-11 17:00 | 88 | 0d | Dev2 | 4h |
| 90 | 1.3.2.2.10 | Perform UT & Fix bugs | 1d | 2011-08-12 08:00 | 2011-08-12 17:00 | 89 | 0d | Dev2 | 8h |
| 91 | 1.3.2.3 | **Directorates Maintenance** | 7d | 2011-08-04 08:00 | 2011-08-12 17:00 |  | 0d | Dev3 | 116h |
| 92 | 1.3.2.3.1 | Study requirement | 0.5d | 2011-08-04 08:00 | 2011-08-04 12:00 | 70SS | 0d | Dev3 | 4h |
| 93 | 1.3.2.3.2 | Prepare GUI prototypes | 0.5d | 2011-08-04 13:00 | 2011-08-04 17:00 | 92 | 0d | Dev3 | 4h |
| 94 | 1.3.2.3.3 | Study design & prepare pseudo codes | 0.75d | 2011-08-05 08:00 | 2011-08-05 15:00 | 93 | 0d | Dev3 | 6h |
| 95 | 1.3.2.3.4 | Prepare UT case document | 0.25d | 2011-08-05 15:00 | 2011-08-05 17:00 | 94 | 0d | Dev3 | 2h |
| 96 | 1.3.2.3.5 | Code | 2d | 2011-08-08 08:00 | 2011-08-09 17:00 | 92, 95 | 0d | Dev3 | 16h |
| 97 | 1.3.2.3.6 | Self code review & Fix bugs | 0.5d | 2011-08-10 08:00 | 2011-08-10 12:00 | 96 | 0d | Dev3 | 4h |
| 98 | 1.3.2.3.7 | Peer code review & Fix bugs | 0.5d | 2011-08-10 13:00 | 2011-08-10 17:00 | 97 | 0d | Dev3; Devx | 8h |
| 99 | 1.3.2.3.8 | Update UT case document | 0.5d | 2011-08-11 08:00 | 2011-08-11 12:00 | 98 | 0d | Dev3 | 4h |
| 100 | 1.3.2.3.9 | Prepare UT scripts | 0.5d | 2011-08-11 13:00 | 2011-08-11 17:00 | 99 | 0d | Dev3 | 4h |
| 101 | 1.3.2.3.10 | Perform UT & Fix bugs | 1d | 2011-08-12 08:00 | 2011-08-12 17:00 | 100 | 0d | Dev3 | 8h |

Notes:
- 69: List + Amend/Tab5 (Supporting Materials Maintenance)
- 80: Add/Tab1 + Tab2 + Tab3 + Amend/Mark In-active + Tab4 (Premises Link)
- 91: List/Add/Amend (General) + Mark In-active

| ID | WBS | Task | Duration | Start | Finish | Predecessors | Total slack | Free slack | Resources | Work |
| --- | --- | --- | --- | --- | --- | --- | --- | --- | --- | --- |
| 102 | 1.3.2.4 | **Departments Maintenance** | 7d | 2011-08-04 08:00 | 2011-08-12 17:00 |  | 0d |  | Dev4 | 116h |
| 103 | 1.3.2.4.1 | Study requirement | 0.5d | 2011-08-04 08:00 | 2011-08-04 12:00 | 70SS | 0d |  | Dev4 | 4h |
| 104 | 1.3.2.4.2 | Prepare GUI prototypes | 0.5d | 2011-08-04 13:00 | 2011-08-04 17:00 | 103 | 0d |  | Dev4 | 4h |
| 105 | 1.3.2.4.3 | Study design & prepare pseudo codes | 0.75d | 2011-08-05 08:00 | 2011-08-05 15:00 | 104 | 0d |  | Dev4 | 6h |
| 106 | 1.3.2.4.4 | Prepare UT case document | 0.25d | 2011-08-05 15:00 | 2011-08-05 17:00 | 105 | 0d |  | Dev4 | 2h |
| 107 | 1.3.2.4.5 | Code | 2d | 2011-08-08 08:00 | 2011-08-09 17:00 | 103, 106 | 0d |  | Dev4 | 16h |
| 108 | 1.3.2.4.6 | Self code review & Fix bugs | 0.5d | 2011-08-10 08:00 | 2011-08-10 12:00 | 107 | 0d |  | Dev4 | 4h |
| 109 | 1.3.2.4.7 | Peer code review & Fix bugs | 0.5d | 2011-08-10 13:00 | 2011-08-10 17:00 | 108 | 0d |  | Dev4; Devx | 8h |
| 110 | 1.3.2.4.8 | Update UT case document | 0.5d | 2011-08-11 08:00 | 2011-08-11 12:00 | 109 | 0d |  | Dev4 | 4h |
| 111 | 1.3.2.4.9 | Prepare UT scripts | 0.5d | 2011-08-11 13:00 | 2011-08-11 17:00 | 110 | 0d |  | Dev4 | 4h |
| 112 | 1.3.2.4.10 | Perform UT & Fix bugs | 1d | 2011-08-12 08:00 | 2011-08-12 17:00 | 111 | 0d |  | Dev4 | 8h |
| 113 | 1.3.2.5 | **Teams Maintenance** | 7d | 2011-08-04 08:00 | 2011-08-12 17:00 |  | 1d |  | Dev5 | 116h |
| 114 | 1.3.2.5.1 | Study requirement | 0.5d | 2011-08-04 08:00 | 2011-08-04 12:00 | 70SS | 1d | 0d | Dev5 | 4h |
| 115 | 1.3.2.5.2 | Prepare GUI prototypes | 0.5d | 2011-08-04 13:00 | 2011-08-04 17:00 | 114 | 1d | 0d | Dev5 | 4h |
| 116 | 1.3.2.5.3 | Study design & prepare pseudo codes | 0.75d | 2011-08-05 08:00 | 2011-08-05 15:00 | 115 | 1d | 0d | Dev5 | 6h |
| 117 | 1.3.2.5.4 | Prepare UT case document | 0.25d | 2011-08-05 15:00 | 2011-08-05 17:00 | 116 | 1d | 0d | Dev5 | 2h |
| 118 | 1.3.2.5.5 | Code | 2d | 2011-08-08 08:00 | 2011-08-09 17:00 | 114, 117 | 1d | 0d | Dev5 | 16h |
| 119 | 1.3.2.5.6 | Self code review & Fix bugs | 0.5d | 2011-08-10 08:00 | 2011-08-10 12:00 | 118 | 1d | 0d | Dev5 | 4h |
| 120 | 1.3.2.5.7 | Peer code review & Fix bugs | 0.5d | 2011-08-10 13:00 | 2011-08-10 17:00 | 119 | 1d | 0d | Dev5; Devx | 8h |
| 121 | 1.3.2.5.8 | Update UT case document | 0.5d | 2011-08-11 08:00 | 2011-08-11 12:00 | 120 | 1d | 0d | Dev5 | 4h |
| 122 | 1.3.2.5.9 | Prepare UT scripts | 0.5d | 2011-08-11 13:00 | 2011-08-11 17:00 | 121 | 1d | 0d | Dev5 | 4h |
| 123 | 1.3.2.5.10 | Perform UT & Fix bugs | 1d | 2011-08-12 08:00 | 2011-08-12 17:00 | 122 | 1d |  | Dev5 | 8h |
| 124 | 1.3.2.6 | Milestone Day 2 | 1d | 2011-08-15 08:00 | 2011-08-15 17:00 | 69, 80, 91, 102 | 0d |  | PM; DevTeam | 16h |
| 125 | 1.3.3 | **Iteration 3 - Services, Geography2** | 8d | 2011-08-16 08:00 | 2011-08-25 17:00 |  | 0d |  |  | 596h |
| 126 | 1.3.3.1 | **Services Maintenance Part1** | 7d | 2011-08-16 08:00 | 2011-08-24 17:00 |  | 0d |  | Dev1 | 116h |
| 127 | 1.3.3.1.1 | Study requirement | 0.5d | 2011-08-16 08:00 | 2011-08-16 12:00 | 68 | 0d |  | Dev1 | 4h |
| 128 | 1.3.3.1.2 | Prepare GUI prototypes | 0.5d | 2011-08-16 13:00 | 2011-08-16 17:00 | 127 | 0d |  | Dev1 | 4h |
| 129 | 1.3.3.1.3 | Study design & prepare pseudo codes | 0.75d | 2011-08-17 08:00 | 2011-08-17 15:00 | 128 | 0d |  | Dev1 | 6h |
| 130 | 1.3.3.1.4 | Prepare UT case document | 0.25d | 2011-08-17 15:00 | 2011-08-17 17:00 | 129 | 0d |  | Dev1 | 2h |
| 131 | 1.3.3.1.5 | Code | 2d | 2011-08-18 08:00 | 2011-08-19 17:00 | 127, 130 | 0d |  | Dev1 | 16h |
| 132 | 1.3.3.1.6 | Self code review & Fix bugs | 0.5d | 2011-08-22 08:00 | 2011-08-22 12:00 | 131 | 0d |  | Dev1 | 4h |
| 133 | 1.3.3.1.7 | Peer code review & Fix bugs | 0.5d | 2011-08-22 13:00 | 2011-08-22 17:00 | 132 | 0d |  | Dev1; Devx | 8h |
| 134 | 1.3.3.1.8 | Update UT case document | 0.5d | 2011-08-23 08:00 | 2011-08-23 12:00 | 133 | 0d |  | Dev1 | 4h |
| 135 | 1.3.3.1.9 | Prepare UT scripts | 0.5d | 2011-08-23 13:00 | 2011-08-23 17:00 | 134 | 0d |  | Dev1 | 4h |
| 136 | 1.3.3.1.10 | Perform UT & Fix bugs | 1d | 2011-08-24 08:00 | 2011-08-24 17:00 | 135 | 0d |  | Dev1 | 8h |

Notes:
- 102: List/Add/Amend (General) + Mark In-active
- 113: List/Add/Amend + Mark In-active
- 126: List + Add-Copy-Amend/Tab1 + Tab5-Funding

| ID | WBS | Task | Duration | Start | Finish | Predecessors | Total slack | Resources | Work |
| --- | --- | --- | --- | --- | --- | --- | --- | --- | --- |
| 137 | 1.3.3.2 | **Services Maintenance Part2** | 7d | 2011-08-16 08:00 | 2011-08-24 17:00 |  | 0d | Dev2 | 116h |
| 138 | 1.3.3.2.1 | Study requirement | 0.5d | 2011-08-16 08:00 | 2011-08-16 12:00 | 127SS | 0d | Dev2 | 4h |
| 139 | 1.3.3.2.2 | Prepare GUI prototypes | 0.5d | 2011-08-16 13:00 | 2011-08-16 17:00 | 138 | 0d | Dev2 | 4h |
| 140 | 1.3.3.2.3 | Study design & prepare pseudo codes | 0.75d | 2011-08-17 08:00 | 2011-08-17 15:00 | 139 | 0d | Dev2 | 6h |
| 141 | 1.3.3.2.4 | Prepare UT case document | 0.25d | 2011-08-17 15:00 | 2011-08-17 17:00 | 140 | 0d | Dev2 | 2h |
| 142 | 1.3.3.2.5 | Code | 2d | 2011-08-18 08:00 | 2011-08-19 17:00 | 138, 141 | 0d | Dev2 | 16h |
| 143 | 1.3.3.2.6 | Self code review & Fix bugs | 0.5d | 2011-08-22 08:00 | 2011-08-22 12:00 | 142 | 0d | Dev2 | 4h |
| 144 | 1.3.3.2.7 | Peer code review & Fix bugs | 0.5d | 2011-08-22 13:00 | 2011-08-22 17:00 | 143 | 0d | Dev2; Devx | 8h |
| 145 | 1.3.3.2.8 | Update UT case document | 0.5d | 2011-08-23 08:00 | 2011-08-23 12:00 | 144 | 0d | Dev2 | 4h |
| 146 | 1.3.3.2.9 | Prepare UT scripts | 0.5d | 2011-08-23 13:00 | 2011-08-23 17:00 | 145 | 0d | Dev2 | 4h |
| 147 | 1.3.3.2.10 | Perform UT & Fix bugs | 1d | 2011-08-24 08:00 | 2011-08-24 17:00 | 146 | 0d | Dev2 | 8h |
| 148 | 1.3.3.3 | **Services Maintenance Part3** | 7d | 2011-08-16 08:00 | 2011-08-24 17:00 |  | 0d | Dev3 | 116h |
| 149 | 1.3.3.3.1 | Study requirement | 0.5d | 2011-08-16 08:00 | 2011-08-16 12:00 | 127SS | 0d | Dev3 | 4h |
| 150 | 1.3.3.3.2 | Prepare GUI prototypes | 0.5d | 2011-08-16 13:00 | 2011-08-16 17:00 | 149 | 0d | Dev3 | 4h |
| 151 | 1.3.3.3.3 | Study design & prepare pseudo codes | 0.75d | 2011-08-17 08:00 | 2011-08-17 15:00 | 150 | 0d | Dev3 | 6h |
| 152 | 1.3.3.3.4 | Prepare UT case document | 0.25d | 2011-08-17 15:00 | 2011-08-17 17:00 | 151 | 0d | Dev3 | 2h |
| 153 | 1.3.3.3.5 | Code | 2d | 2011-08-18 08:00 | 2011-08-19 17:00 | 149, 152 | 0d | Dev3 | 16h |
| 154 | 1.3.3.3.6 | Self code review & Fix bugs | 0.5d | 2011-08-22 08:00 | 2011-08-22 12:00 | 153 | 0d | Dev3 | 4h |
| 155 | 1.3.3.3.7 | Peer code review & Fix bugs | 0.5d | 2011-08-22 13:00 | 2011-08-22 17:00 | 154 | 0d | Dev3; Devx | 8h |
| 156 | 1.3.3.3.8 | Update UT case document | 0.5d | 2011-08-23 08:00 | 2011-08-23 12:00 | 155 | 0d | Dev3 | 4h |
| 157 | 1.3.3.3.9 | Prepare UT scripts | 0.5d | 2011-08-23 13:00 | 2011-08-23 17:00 | 156 | 0d | Dev3 | 4h |
| 158 | 1.3.3.3.10 | Perform UT & Fix bugs | 1d | 2011-08-24 08:00 | 2011-08-24 17:00 | 157 | 0d | Dev3 | 8h |
| 159 | 1.3.3.4 | **Services Maintenance Part4** | 7d | 2011-08-16 08:00 | 2011-08-24 17:00 |  | 0d | Dev4 | 116h |
| 160 | 1.3.3.4.1 | Study requirement | 0.5d | 2011-08-16 08:00 | 2011-08-16 12:00 | 127SS | 0d | Dev4 | 4h |
| 161 | 1.3.3.4.2 | Prepare GUI prototypes | 0.5d | 2011-08-16 13:00 | 2011-08-16 17:00 | 160 | 0d | Dev4 | 4h |
| 162 | 1.3.3.4.3 | Study design & prepare pseudo codes | 0.75d | 2011-08-17 08:00 | 2011-08-17 15:00 | 161 | 0d | Dev4 | 6h |
| 163 | 1.3.3.4.4 | Prepare UT case document | 0.25d | 2011-08-17 15:00 | 2011-08-17 17:00 | 162 | 0d | Dev4 | 2h |
| 164 | 1.3.3.4.5 | Code | 2d | 2011-08-18 08:00 | 2011-08-19 17:00 | 160, 163 | 0d | Dev4 | 16h |
| 165 | 1.3.3.4.6 | Self code review & Fix bugs | 0.5d | 2011-08-22 08:00 | 2011-08-22 12:00 | 164 | 0d | Dev4 | 4h |
| 166 | 1.3.3.4.7 | Peer code review & Fix bugs | 0.5d | 2011-08-22 13:00 | 2011-08-22 17:00 | 165 | 0d | Dev4; Devx | 8h |
| 167 | 1.3.3.4.8 | Update UT case document | 0.5d | 2011-08-23 08:00 | 2011-08-23 12:00 | 166 | 0d | Dev4 | 4h |
| 168 | 1.3.3.4.9 | Prepare UT scripts | 0.5d | 2011-08-23 13:00 | 2011-08-23 17:00 | 167 | 0d | Dev4 | 4h |
| 169 | 1.3.3.4.10 | Perform UT & Fix bugs | 1d | 2011-08-24 08:00 | 2011-08-24 17:00 | 168 | 0d | Dev4 | 8h |

Notes:
- 137: Add-Copy-Amend/Tab2, Tab3,Tab4-Contract
- 148: Amend/Organization Tab + Mark in-active
- 159: Amend/Premises Tab

| ID | WBS | Task | Duration | Start | Finish | Predecessors | Total slack | Free slack | Resources | Work |
| --- | --- | --- | --- | --- | --- | --- | --- | --- | --- | --- |
| 170 | 1.3.3.5 | **Geography Maintenance** | 7d | 2011-08-16 08:00 | 2011-08-24 17:00 |  | 1d |  | Dev5 | 116h |
| 171 | 1.3.3.5.1 | Study requirement | 0.5d | 2011-08-16 08:00 | 2011-08-16 12:00 | 127SS | 1d | 0d | Dev5 | 4h |
| 172 | 1.3.3.5.2 | Prepare GUI prototypes | 0.5d | 2011-08-16 13:00 | 2011-08-16 17:00 | 171 | 1d | 0d | Dev5 | 4h |
| 173 | 1.3.3.5.3 | Study design & prepare pseudo codes | 0.75d | 2011-08-17 08:00 | 2011-08-17 15:00 | 172 | 1d | 0d | Dev5 | 6h |
| 174 | 1.3.3.5.4 | Prepare UT case document | 0.25d | 2011-08-17 15:00 | 2011-08-17 17:00 | 173 | 1d | 0d | Dev5 | 2h |
| 175 | 1.3.3.5.5 | Code | 2d | 2011-08-18 08:00 | 2011-08-19 17:00 | 171, 174 | 1d | 0d | Dev5 | 16h |
| 176 | 1.3.3.5.6 | Self code review & Fix bugs | 0.5d | 2011-08-22 08:00 | 2011-08-22 12:00 | 175 | 1d | 0d | Dev5 | 4h |
| 177 | 1.3.3.5.7 | Peer code review & Fix bugs | 0.5d | 2011-08-22 13:00 | 2011-08-22 17:00 | 176 | 1d | 0d | Dev5; Devx | 8h |
| 178 | 1.3.3.5.8 | Update UT case document | 0.5d | 2011-08-23 08:00 | 2011-08-23 12:00 | 177 | 1d | 0d | Dev5 | 4h |
| 179 | 1.3.3.5.9 | Prepare UT scripts | 0.5d | 2011-08-23 13:00 | 2011-08-23 17:00 | 178 | 1d | 0d | Dev5 | 4h |
| 180 | 1.3.3.5.10 | Perform UT & Fix bugs | 1d | 2011-08-24 08:00 | 2011-08-24 17:00 | 179 | 1d |  | Dev5 | 8h |
| 181 | 1.3.3.6 | Milestone Day3 | 1d | 2011-08-25 08:00 | 2011-08-25 17:00 | 126, 137, 148, 159 | 0d |  | PM; DevTeam | 16h |
| 182 | 1.3.4 | **Iteration 4 - Premises** | 8d | 2011-08-26 08:00 | 2011-09-06 17:00 |  | 0d |  |  | 596h |
| 183 | 1.3.4.1 | **Premises Maintenance Part1** | 7d | 2011-08-26 08:00 | 2011-09-05 17:00 |  | 0d |  | Dev1 | 116h |
| 184 | 1.3.4.1.1 | Study requirement | 0.5d | 2011-08-26 08:00 | 2011-08-26 12:00 | 125 | 0d |  | Dev1 | 4h |
| 185 | 1.3.4.1.2 | Prepare GUI prototypes | 0.5d | 2011-08-26 13:00 | 2011-08-26 17:00 | 184 | 0d |  | Dev1 | 4h |
| 186 | 1.3.4.1.3 | Study design & prepare pseudo codes | 0.75d | 2011-08-29 08:00 | 2011-08-29 15:00 | 185 | 0d |  | Dev1 | 6h |
| 187 | 1.3.4.1.4 | Prepare UT case document | 0.25d | 2011-08-29 15:00 | 2011-08-29 17:00 | 186 | 0d |  | Dev1 | 2h |
| 188 | 1.3.4.1.5 | Code | 2d | 2011-08-30 08:00 | 2011-08-31 17:00 | 184, 187 | 0d |  | Dev1 | 16h |
| 189 | 1.3.4.1.6 | Self code review & Fix bugs | 0.5d | 2011-09-01 08:00 | 2011-09-01 12:00 | 188 | 0d |  | Dev1 | 4h |
| 190 | 1.3.4.1.7 | Peer code review & Fix bugs | 0.5d | 2011-09-01 13:00 | 2011-09-01 17:00 | 189 | 0d |  | Dev1; Devx | 8h |
| 191 | 1.3.4.1.8 | Update UT case document | 0.5d | 2011-09-02 08:00 | 2011-09-02 12:00 | 190 | 0d |  | Dev1 | 4h |
| 192 | 1.3.4.1.9 | Prepare UT scripts | 0.5d | 2011-09-02 13:00 | 2011-09-02 17:00 | 191 | 0d |  | Dev1 | 4h |
| 193 | 1.3.4.1.10 | Perform UT & Fix bugs | 1d | 2011-09-05 08:00 | 2011-09-05 17:00 | 192 | 0d |  | Dev1 | 8h |

Notes:
- 170: List, Add, Amend, Mark In-active: Trust Regions, Trust Districts
- 183: List, Add-Amend/Tab1 + Tab4 + Mark In-active

| ID | WBS | Task | Duration | Start | Finish | Predecessors | Total slack | Resources | Work |
| --- | --- | --- | --- | --- | --- | --- | --- | --- | --- |
| 194 | 1.3.4.2 | **Premises Maintenance Part2** | 7d | 2011-08-26 08:00 | 2011-09-05 17:00 |  | 0d | Dev2 | 116h |
| 195 | 1.3.4.2.1 | Study requirement | 0.5d | 2011-08-26 08:00 | 2011-08-26 12:00 | 184SS | 0d | Dev2 | 4h |
| 196 | 1.3.4.2.2 | Prepare GUI prototypes | 0.5d | 2011-08-26 13:00 | 2011-08-26 17:00 | 195 | 0d | Dev2 | 4h |
| 197 | 1.3.4.2.3 | Study design & prepare pseudo codes | 0.75d | 2011-08-29 08:00 | 2011-08-29 15:00 | 196 | 0d | Dev2 | 6h |
| 198 | 1.3.4.2.4 | Prepare UT case document | 0.25d | 2011-08-29 15:00 | 2011-08-29 17:00 | 197 | 0d | Dev2 | 2h |
| 199 | 1.3.4.2.5 | Code | 2d | 2011-08-30 08:00 | 2011-08-31 17:00 | 195, 198 | 0d | Dev2 | 16h |
| 200 | 1.3.4.2.6 | Self code review & Fix bugs | 0.5d | 2011-09-01 08:00 | 2011-09-01 12:00 | 199 | 0d | Dev2 | 4h |
| 201 | 1.3.4.2.7 | Peer code review & Fix bugs | 0.5d | 2011-09-01 13:00 | 2011-09-01 17:00 | 200 | 0d | Dev2; Devx | 8h |
| 202 | 1.3.4.2.8 | Update UT case document | 0.5d | 2011-09-02 08:00 | 2011-09-02 12:00 | 201 | 0d | Dev2 | 4h |
| 203 | 1.3.4.2.9 | Prepare UT scripts | 0.5d | 2011-09-02 13:00 | 2011-09-02 17:00 | 202 | 0d | Dev2 | 4h |
| 204 | 1.3.4.2.10 | Perform UT & Fix bugs | 1d | 2011-09-05 08:00 | 2011-09-05 17:00 | 203 | 0d | Dev2 | 8h |
| 205 | 1.3.4.3 | **Premises Maintenance Part3** | 7d | 2011-08-26 08:00 | 2011-09-05 17:00 |  | 0d | Dev3 | 116h |
| 206 | 1.3.4.3.1 | Study requirement | 0.5d | 2011-08-26 08:00 | 2011-08-26 12:00 | 184SS | 0d | Dev3 | 4h |
| 207 | 1.3.4.3.2 | Prepare GUI prototypes | 0.5d | 2011-08-26 13:00 | 2011-08-26 17:00 | 206 | 0d | Dev3 | 4h |
| 208 | 1.3.4.3.3 | Study design & prepare pseudo codes | 0.75d | 2011-08-29 08:00 | 2011-08-29 15:00 | 207 | 0d | Dev3 | 6h |
| 209 | 1.3.4.3.4 | Prepare UT case document | 0.25d | 2011-08-29 15:00 | 2011-08-29 17:00 | 208 | 0d | Dev3 | 2h |
| 210 | 1.3.4.3.5 | Code | 2d | 2011-08-30 08:00 | 2011-08-31 17:00 | 206, 209 | 0d | Dev3 | 16h |
| 211 | 1.3.4.3.6 | Self code review & Fix bugs | 0.5d | 2011-09-01 08:00 | 2011-09-01 12:00 | 210 | 0d | Dev3 | 4h |
| 212 | 1.3.4.3.7 | Peer code review & Fix bugs | 0.5d | 2011-09-01 13:00 | 2011-09-01 17:00 | 211 | 0d | Dev3; Devx | 8h |
| 213 | 1.3.4.3.8 | Update UT case document | 0.5d | 2011-09-02 08:00 | 2011-09-02 12:00 | 212 | 0d | Dev3 | 4h |
| 214 | 1.3.4.3.9 | Prepare UT scripts | 0.5d | 2011-09-02 13:00 | 2011-09-02 17:00 | 213 | 0d | Dev3 | 4h |
| 215 | 1.3.4.3.10 | Perform UT & Fix bugs | 1d | 2011-09-05 08:00 | 2011-09-05 17:00 | 214 | 0d | Dev3 | 8h |
| 216 | 1.3.4.4 | **Premises Maintenance Part4** | 7d | 2011-08-26 08:00 | 2011-09-05 17:00 |  | 0d | Dev4 | 116h |
| 217 | 1.3.4.4.1 | Study requirement | 0.5d | 2011-08-26 08:00 | 2011-08-26 12:00 | 184SS | 0d | Dev4 | 4h |
| 218 | 1.3.4.4.2 | Prepare GUI prototypes | 0.5d | 2011-08-26 13:00 | 2011-08-26 17:00 | 217 | 0d | Dev4 | 4h |
| 219 | 1.3.4.4.3 | Study design & prepare pseudo codes | 0.75d | 2011-08-29 08:00 | 2011-08-29 15:00 | 218 | 0d | Dev4 | 6h |
| 220 | 1.3.4.4.4 | Prepare UT case document | 0.25d | 2011-08-29 15:00 | 2011-08-29 17:00 | 219 | 0d | Dev4 | 2h |
| 221 | 1.3.4.4.5 | Code | 2d | 2011-08-30 08:00 | 2011-08-31 17:00 | 217, 220 | 0d | Dev4 | 16h |
| 222 | 1.3.4.4.6 | Self code review & Fix bugs | 0.5d | 2011-09-01 08:00 | 2011-09-01 12:00 | 221 | 0d | Dev4 | 4h |
| 223 | 1.3.4.4.7 | Peer code review & Fix bugs | 0.5d | 2011-09-01 13:00 | 2011-09-01 17:00 | 222 | 0d | Dev4; Devx | 8h |
| 224 | 1.3.4.4.8 | Update UT case document | 0.5d | 2011-09-02 08:00 | 2011-09-02 12:00 | 223 | 0d | Dev4 | 4h |
| 225 | 1.3.4.4.9 | Prepare UT scripts | 0.5d | 2011-09-02 13:00 | 2011-09-02 17:00 | 224 | 0d | Dev4 | 4h |
| 226 | 1.3.4.4.10 | Perform UT & Fix bugs | 1d | 2011-09-05 08:00 | 2011-09-05 17:00 | 225 | 0d | Dev4 | 8h |

Notes:
- 194: Add-Amend/Tab2 + Tab3
- 205: Add-Amend/Tab4-Facility Maintenance (List, Add, Amend, Mark In-active)
- 216: Add-Amend/Tab5-Volunteering Opportunity (List, Add, Amend, Mark In-active)

| ID | WBS | Task | Duration | Start | Finish | Predecessors | Total slack | Free slack | Resources | Work |
| --- | --- | --- | --- | --- | --- | --- | --- | --- | --- | --- |
| 227 | 1.3.4.5 | **Premises Maintenance Part5** | 7d | 2011-08-26 08:00 | 2011-09-05 17:00 |  | 1d |  | Dev5 | 116h |
| 228 | 1.3.4.5.1 | Study requirement | 0.5d | 2011-08-26 08:00 | 2011-08-26 12:00 | 184SS | 1d | 0d | Dev5 | 4h |
| 229 | 1.3.4.5.2 | Prepare GUI prototypes | 0.5d | 2011-08-26 13:00 | 2011-08-26 17:00 | 228 | 1d | 0d | Dev5 | 4h |
| 230 | 1.3.4.5.3 | Study design & prepare pseudo codes | 0.75d | 2011-08-29 08:00 | 2011-08-29 15:00 | 229 | 1d | 0d | Dev5 | 6h |
| 231 | 1.3.4.5.4 | Prepare UT case document | 0.25d | 2011-08-29 15:00 | 2011-08-29 17:00 | 230 | 1d | 0d | Dev5 | 2h |
| 232 | 1.3.4.5.5 | Code | 2d | 2011-08-30 08:00 | 2011-08-31 17:00 | 228, 231 | 1d | 0d | Dev5 | 16h |
| 233 | 1.3.4.5.6 | Self code review & Fix bugs | 0.5d | 2011-09-01 08:00 | 2011-09-01 12:00 | 232 | 1d | 0d | Dev5 | 4h |
| 234 | 1.3.4.5.7 | Peer code review & Fix bugs | 0.5d | 2011-09-01 13:00 | 2011-09-01 17:00 | 233 | 1d | 0d | Dev5; Devx | 8h |
| 235 | 1.3.4.5.8 | Update UT case document | 0.5d | 2011-09-02 08:00 | 2011-09-02 12:00 | 234 | 1d | 0d | Dev5 | 4h |
| 236 | 1.3.4.5.9 | Prepare UT scripts | 0.5d | 2011-09-02 13:00 | 2011-09-02 17:00 | 235 | 1d | 0d | Dev5 | 4h |
| 237 | 1.3.4.5.10 | Perform UT & Fix bugs | 1d | 2011-09-05 08:00 | 2011-09-05 17:00 | 236 | 1d |  | Dev5 | 8h |
| 238 | 1.3.4.6 | Milestone Day 4 | 1d | 2011-09-06 08:00 | 2011-09-06 17:00 | 183, 194, 205, 216 | 0d |  | PM; DevTeam | 16h |
| 239 | 1.4 | **Termination** | 1d | 2011-09-07 08:00 | 2011-09-07 17:00 |  | 0d |  |  |  |
| 240 | 1.4.1 | Project Package, Evaluations | 0.75d | 2011-09-07 08:00 | 2011-09-07 15:00 | 10 | 0d |  |  |  |
| 241 | 1.4.2 | Post-mortem Meeting | 0.25d | 2011-09-07 15:00 | 2011-09-07 17:00 | 240 | 0d |  |  |  |

Notes:
- 227: Add-Amend/Tab6-Minor Works Project (List, Add, Amend, Mark In-active)
